task,owner,hours,source_status,description,source_start,source_end
01  Описать первый сценарий,Автор проекта,3,Готово,"Определить входы: цель, срок, стартовый капитал и доступный взнос. Зафиксировать результат расчёта и границы демо.
Документы: UC-1, UC-2, FR-1, US-1, FR-2, US-2",2026-11-11T00:00:00,2026-11-15T00:00:00
02  Подготовить интервью,Автор проекта,3,Не начата,"Составить вопросы о цели, регулярном взносе и риске дефицита. Подготовить показ текущего макета.",2026-11-13T00:00:00,2026-11-17T00:00:00
03  Набрать участников интервью,Автор проекта,3,Не начата,Пригласить работающих людей 25–40 лет с долгосрочной целью и согласовать время бесед.,2026-11-16T00:00:00,2026-11-18T00:00:00
04  Провести первые 4 интервью,Автор проекта,6,Не начата,"Проверить, понимают ли участники связь цели и взноса. Зафиксировать вопросы и возражения.",2026-11-18T00:00:00,2026-11-20T00:00:00
05  Провести ещё 6 интервью,Автор проекта,8,Не начата,Проверить понимание дефицита и готовность вернуться к сохранённому плану. Обезличить записи.,2026-11-23T00:00:00,2026-11-26T00:00:00
06  Свести результаты интервью,Автор проекта,2,Не начата,"Сгруппировать наблюдения по пониманию цели, взноса и календаря. Уточнить требования к прототипу.",2026-11-27T00:00:00,2026-11-27T00:00:00
07  Описать допущения расчёта,Автор проекта,4,Не начата,"Зафиксировать сроки, текущие и будущие рубли, реинвестирование, расходы и параметры налогового сценария.
Документы: FR-2, US-2, FR-3, US-3",2026-11-30T00:00:00,2026-12-01T00:00:00
08  Подготовить тестовые данные,Автор проекта,4,Не начата,"Собрать фиксированный набор цен, НКД, лотов, купонов и погашений. Добавить случай с пропущенными данными.
Документы: NFR-1, NFR-3, US-3, US-5",2026-12-02T00:00:00,2026-12-04T00:00:00
09  Реализовать расчёт накопления,Автор проекта,6,Не начата,"Рассчитать капитал и требуемый взнос на дату цели. Показать разницу при ограниченном взносе.
Документы: FR-2, US-2",2026-12-07T00:00:00,2026-12-09T00:00:00
10  Проверить расчёт накопления,Автор проекта,4,Не начата,"Сверить результаты с ручными примерами, включая нулевую доходность, ограниченный взнос и граничные даты.
Документы: FR-2, US-2, NFR-1",2026-12-10T00:00:00,2026-12-11T00:00:00
11  Построить календарь выплат,Автор проекта,7,Не начата,"Разнести чистые купоны и движения капитала по месяцам. Показать остаток капитала к концу горизонта.
Документы: FR-3, US-3",2026-12-14T00:00:00,2026-12-16T00:00:00
12  Добавить резерв и дефицит,Автор проекта,3,Не начата,"Проверить месяцы с достаточными купонами, расходом резерва и непокрытой суммой.
Документы: FR-3, US-3",2026-12-17T00:00:00,2026-12-18T00:00:00
13  Добавить стресс-сценарий,Автор проекта,4,Не начата,"Сравнить базовый план с условиями снижения реинвестирования и пропуска купона. Показать месяцы дефицита.
Документы: FR-4, US-4",2026-12-21T00:00:00,2026-12-22T00:00:00
14  Собрать экран расчёта,Автор проекта,4,Не начата,"Связать форму цели с результатом: капитал, взнос, календарь и допущения. Добавить состояния ошибок.
Документы: FR-1, US-1, FR-2, US-2, FR-3, US-3",2026-12-23T00:00:00,2026-12-25T00:00:00
15  Проверить путь в браузере,Автор проекта,4,Не начата,"Пройти путь от ввода цели до календаря на телефоне и компьютере. Сверить 2 примера с тестовыми данными.
Документы: UC-1, UC-2, UC-3, FR-1, FR-2, FR-3",2026-12-28T00:00:00,2026-12-29T00:00:00
16  Подготовить протокол сравнения,Автор проекта,4,Не начата,"Зафиксировать бюджет 1 млн ₽, одинаковые ограничения, налоговый сценарий, издержки и показатели сравнения.
Документы: M-3, FR-5, US-5",2027-01-08T00:00:00,2027-01-08T00:00:00
17  Проверить набор для сравнения,Автор проекта,4,Не начата,"Зафиксировать дату и покрытие данных. При неполном рыночном срезе проверить методику на тестовом наборе.
Документы: FR-5, NFR-1, NFR-3",2027-01-11T00:00:00,2027-01-12T00:00:00
18  Рассчитать базовые портфели,Автор проекта,5,Не начата,"Собрать выборку по доходности к погашению и простую лестницу. Применить одинаковые лимиты и расходы.
Документы: FR-5, US-5",2027-01-13T00:00:00,2027-01-15T00:00:00
19  Рассчитать подбор по календарю,Автор проекта,6,Не начата,"Подобрать портфель в рамках тех же ограничений. Сравнить чистые купоны, дефициты и остаток капитала.
Документы: FR-5, US-5",2027-01-18T00:00:00,2027-01-20T00:00:00
20  Оформить вывод по гипотезе,Автор проекта,4,Не начата,"Проверить гипотезу +10% к среднему чистому купону. Отразить риск, стресс и ограничения набора.
Документы: M-3, FR-5, US-5",2027-01-21T00:00:00,2027-01-22T00:00:00
21  Проверить сценарий с ИИ,Автор проекта,4,Не начата,"Проверить разбор и подтверждение параметров цели на тестовых фразах и объяснение готовых цифр.
Документы: FR-1, US-1, FR-10, US-10",2027-01-25T00:00:00,2027-01-26T00:00:00
22  Подготовить план тестовой интеграции,Автор проекта,4,Не начата,"Описать необходимые данные, согласие на план, сверку и остановку для будущей проверки на виртуальном счёте.
Документы: UC-6, FR-7, FR-8, FR-9, NFR-2, US-7, US-8, US-9",2027-01-27T00:00:00,2027-01-29T00:00:00
23  Подготовить итоговое демо,Автор проекта,5,Не начата,"Показать цель, рассчитанный взнос, календарь и стресс. Отметить, где использованы тестовые данные.
Документы: UC-1, UC-2, UC-3, FR-1, FR-2, FR-3, FR-4",2027-02-01T00:00:00,2027-02-03T00:00:00
24  Подвести итоги и обновить план,Автор проекта,3,Не начата,"Свести интервью, расчёт и результаты сравнения. По итогам определить следующий шаг по данным и песочнице.
Документы: BG-3, M-3, FR-5, US-5",2027-02-04T00:00:00,2027-02-05T00:00:00
